# Gant - Proyecto

How a schedule from MS Project changed from version to version. A marks actual dates.

## Version 1 (saved 2025-08-19)

Note of the change: Create Gant - Proyecto.mpp

| ID | WBS | Task | Duration | Start | Finish | Predecessors | Total float | Constraint |
| --- | --- | --- | --- | --- | --- | --- | --- | --- |
| 1 | 1 | **Proyecto Final** | 61d | 2025-08-11 | 2025-10-04 |  | 0d |  |
| 2 |  | Inicio de cursada | 0d | 2025-08-11 | 2025-08-11 |  | 0d | start no earlier than 2025-08-11 |
| 3 |  | Selección de proyecto, estudio de viabilidad y definición del alcance | 4d | 2025-08-11 | 2025-08-14 | 2 | 0d |  |
| 4 |  | Selección y compra de materiales | 14d | 2025-08-14 | 2025-08-27 | 3 | 0d |  |
| 5 |  | Entrega de Propuesta Inicial | 0d | 2025-08-25 | 2025-08-25 | 2FS+16d | 45d |  |
| 6 |  | Armado y puesta en funcionamiento de Dron | 20d | 2025-08-14 | 2025-09-01 | 4FS-14d | 0d |  |
| 7 |  | Desarrollo de pilotaje autonomo GPS | 10d | 2025-09-01 | 2025-09-10 | 6 | 0d |  |
| 8 |  | Armado y programacion de sistema de deteccion IR | 15d | 2025-08-18 | 2025-08-31 | 4FS-10d | 1d |  |
| 9 |  | Armado y programacion de sistema de camara RGB | 15d | 2025-08-18 | 2025-08-31 | 4FS-10d | 1d |  |
| 10 |  | Programacion de sistema de comunicación IR+RGB+Base | 8d | 2025-08-31 | 2025-09-07 | 8, 9 | 1d |  |
| 11 |  | Integracion de IR + RGB | 2d | 2025-09-07 | 2025-09-09 | 10 | 1d |  |
| 12 |  | Integracion de Dron y Sistema de Detección | 5d | 2025-09-10 | 2025-09-14 | 11, 7 | 0d |  |
| 13 |  | Armado y programacion de compartimento portaobjetos | 6d | 2025-08-31 | 2025-09-05 | 8 | 10d |  |
| 14 |  | Integracion de Dron y Portaobjetos | 7d | 2025-09-14 | 2025-09-20 | 12, 13 | 0d |  |
| 15 |  | Etapa de pruebas | 15d | 2025-09-21 | 2025-10-04 | 14 | 0d |  |
| 16 |  | Entrega final | 0d | 2025-10-04 | 2025-10-04 | 15 | 0d |  |

## Version 2 (saved 2025-09-01)

Note of the change: Merge branch 'main' of https://github.com/ChristianMoscariello/Proyecto-Mecatronico

Last finish 2025-10-04 → 2025-10-26 (+22d).

Changed:

| ID | Task | Start | Finish | Duration | Total float |
| --- | --- | --- | --- | --- | --- |
| 1 | **Proyecto Final** |  | 2025-10-04 → 2025-10-26 (+22d) | 61d → 86d |  |
| 6 | Armado y puesta en funcionamiento de Dron |  | 2025-09-01 → 2025-09-08 (+7d) | 20d → 28d | 0d → 4d |
| 7 | Desarrollo de pilotaje autonomo GPS | 2025-09-01 → 2025-09-08 (+7d) | 2025-09-10 → 2025-09-20 (+10d) | 10d → 14d | 0d → 4d |
| 8 | Armado y programacion de sistema de deteccion IR |  | 2025-08-31 → 2025-09-05 (+5d) | 15d → 21d | 1d → 0d |
| 9 | Armado y programacion de sistema de camara RGB |  | 2025-08-31 → 2025-09-05 (+5d) | 15d → 21d | 1d → 0d |
| 10 | Programacion de sistema de comunicación IR+RGB+Base | 2025-08-31 → 2025-09-05 (+5d) | 2025-09-07 → 2025-09-18 (+11d) | 8d → 14d | 1d → 0d |
| 11 | Integracion de IR + RGB | 2025-09-07 → 2025-09-18 (+11d) | 2025-09-09 → 2025-09-24 (+15d) | 2d → 7d | 1d → 0d |
| 12 | Integracion de Dron y Sistema de Detección | 2025-09-10 → 2025-09-24 (+14d) | 2025-09-14 → 2025-10-06 (+22d) | 5d → 14d |  |
| 13 | Armado y programacion de compartimento portaobjetos | 2025-08-31 → 2025-09-05 (+5d) | 2025-09-05 → 2025-09-12 (+7d) | 6d → 7d | 10d → 28d |
| 14 | Integracion de Dron y Portaobjetos | 2025-09-14 → 2025-10-07 (+23d) | 2025-09-20 → 2025-10-13 (+23d) |  |  |
| 15 | Etapa de pruebas | 2025-09-21 → 2025-10-13 (+22d) | 2025-10-04 → 2025-10-26 (+22d) |  |  |
| 16 | Entrega final | 2025-10-04 → 2025-10-26 (+22d) | 2025-10-04 → 2025-10-26 (+22d) |  |  |

## Version 3 (saved 2025-09-01)

Note of the change: Update Gant - Proyecto.mpp

Last finish 2025-10-26 → 2025-11-17 (+22d).

Changed:

| ID | Task | Start | Finish | Duration | Total float |
| --- | --- | --- | --- | --- | --- |
| 1 | **Proyecto Final** |  | 2025-10-26 → 2025-11-17 (+22d) | 86d → 111d |  |
| 7 | Desarrollo de pilotaje autonomo GPS |  | 2025-09-20 → 2025-09-27 (+7d) | 14d → 21d | 4d → 11d |
| 10 | Programacion de sistema de comunicación IR+RGB+Base |  | 2025-09-18 → 2025-09-24 (+6d) | 14d → 21d |  |
| 11 | Integracion de IR + RGB | 2025-09-18 → 2025-09-24 (+6d) | 2025-09-24 → 2025-10-06 (+12d) | 7d → 14d |  |
| 12 | Integracion de Dron y Sistema de Detección | 2025-09-24 → 2025-10-07 (+13d) | 2025-10-06 → 2025-10-19 (+13d) |  |  |
| 14 | Integracion de Dron y Portaobjetos | 2025-10-07 → 2025-10-19 (+12d) | 2025-10-13 → 2025-10-28 (+15d) | 7d → 10d |  |
| 15 | Etapa de pruebas | 2025-10-13 → 2025-10-28 (+15d) | 2025-10-26 → 2025-11-17 (+22d) | 15d → 23d |  |
| 16 | Entrega final | 2025-10-26 → 2025-11-17 (+22d) | 2025-10-26 → 2025-11-17 (+22d) |  |  |

## Version 4 (saved 2025-09-01)

Note of the change: Update Gant - Proyecto.mpp

Last finish 2025-11-17 → 2025-10-26 (-22d).

Changed:

| ID | Task | Start | Finish | Duration | Total float |
| --- | --- | --- | --- | --- | --- |
| 1 | **Proyecto Final** |  | 2025-11-17 → 2025-10-26 (-22d) | 111d → 86d |  |
| 7 | Desarrollo de pilotaje autonomo GPS |  | 2025-09-27 → 2025-09-20 (-7d) | 21d → 14d | 11d → 4d |
| 10 | Programacion de sistema de comunicación IR+RGB+Base |  | 2025-09-24 → 2025-09-18 (-6d) | 21d → 14d |  |
| 11 | Integracion de IR + RGB | 2025-09-24 → 2025-09-18 (-6d) | 2025-10-06 → 2025-09-24 (-12d) | 14d → 7d |  |
| 12 | Integracion de Dron y Sistema de Detección | 2025-10-07 → 2025-09-24 (-13d) | 2025-10-19 → 2025-10-06 (-13d) |  |  |
| 14 | Integracion de Dron y Portaobjetos | 2025-10-19 → 2025-10-07 (-12d) | 2025-10-28 → 2025-10-13 (-15d) | 10d → 7d |  |
| 15 | Etapa de pruebas | 2025-10-28 → 2025-10-13 (-15d) | 2025-11-17 → 2025-10-26 (-22d) | 23d → 15d |  |
| 16 | Entrega final | 2025-11-17 → 2025-10-26 (-22d) | 2025-11-17 → 2025-10-26 (-22d) |  |  |

## Version 5 (saved 2025-09-01)

Note of the change: Update Gant - Proyecto.mpp

Last finish 2025-10-26 → 2025-11-17 (+22d).

Changed:

| ID | Task | Start | Finish | Duration | Total float | Predecessors |
| --- | --- | --- | --- | --- | --- | --- |
| 1 | **Proyecto Final** |  | 2025-10-26 → 2025-11-17 (+22d) | 86d → 111d |  |  |
| 7 | Desarrollo de pilotaje autonomo GPS |  | 2025-09-20 → 2025-09-27 (+7d) | 14d → 21d | 4d → 0d |  |
| 10 | Integracion de IR + RGB | 2025-09-18 → 2025-09-05 (-13d) | 2025-09-24 → 2025-09-14 (-10d) | 7d → 10d |  | 11 → 8, 9 |
| 11 | Programacion de sistema de comunicación IR+RGB+Base | 2025-09-05 → 2025-09-14 (+9d) | 2025-09-18 → 2025-09-27 (+9d) |  |  | 8, 9 → 10 |
| 12 | Integracion de Dron y Sistema de Detección | 2025-09-24 → 2025-09-27 (+3d) | 2025-10-06 → 2025-10-09 (+3d) |  |  | 10, 7 → 11, 7 |
| 13 | Armado y programacion de compartimento portaobjetos |  | 2025-09-12 → 2025-09-14 (+2d) | 7d → 10d |  |  |
| 14 | Integracion de Dron y Portaobjetos | 2025-10-07 → 2025-10-09 (+2d) | 2025-10-13 → 2025-10-22 (+9d) | 7d → 14d |  |  |
| 15 | Etapa de pruebas | 2025-10-13 → 2025-10-22 (+9d) | 2025-10-26 → 2025-11-13 (+18d) | 15d → 25d |  |  |
| 16 | Entrega final | 2025-10-26 → 2025-11-17 (+22d) | 2025-10-26 → 2025-11-17 (+22d) |  |  | 15 → 15FS+5d |

## Version 6 (saved 2025-09-01)

Note of the change: Merge branch 'main' of https://github.com/ChristianMoscariello/Proyecto-Mecatronico

Last finish stays 2025-11-17.

Added:

| ID | Task | Duration | Start | Finish |
| --- | --- | --- | --- | --- |
| 11 | Primera entrega | 0d | 2025-09-22 | 2025-09-22 |
| 15 | Segunda entrega | 0d | 2025-10-20 | 2025-10-20 |
